# Sistema de Control de Nivel de Líquido en Tanques

How a schedule from MS Project changed from version to version. A marks actual dates.

## Version 1 (saved 2011-09-15)

Note of the change: Migración de documento de tareas de OpenProj a MSProject2010. Se incluye un calendario tentativo

| ID | WBS | Task | Duration | Start | Finish | Predecessors | Total float |
| --- | --- | --- | --- | --- | --- | --- | --- |
| 1 |  | Planificacion | 1d? | 2011-09-14 | 2011-09-19 |  | 5d |
| 2 | 2 | **Documentación** | 28d? | 2011-09-19 | 2011-10-27 | 1 | 6d |
| 3 |  | Análisis | 1.88d? | 2011-09-19 | 2011-09-27 |  | 5d |
| 4 |  | Revisión análisis | 0.62d? | 2011-10-21 | 2011-10-25 | 3 | 9d |
| 5 |  | Diseño | 2.5d? | 2011-09-27 | 2011-10-07 | 3 | 5d |
| 6 |  | Revisión Diseño | 0.62d? | 2011-10-25 | 2011-10-27 | 5 | 7d |
| 7 |  | Diseño Detallado | 2.5d? | 2011-10-07 | 2011-10-19 | 5 | 11d |
| 8 |  | Revisión Diseño Detallado | 0.62d? | 2011-10-19 | 2011-10-21 | 7 | 11d |
| 9 | 3 | **Configuración de Infraestructura (hardware)** | 23d? | 2011-10-27 | 2011-11-29 | 2 | 0d |
| 10 |  | Conexionado Inicial y Pruebas Preliminares | 2.5d? | 2011-11-10 | 2011-11-22 |  | 0d |
| 11 |  | Pruebas de Adquisición de Datos desde Placa RIAC | 2.5d? | 2011-10-27 | 2011-11-08 |  | 9d |
| 12 |  | Pruebas de Control del Actuador desde Matlab | 3.25d? | 2011-10-27 | 2011-11-10 |  | 7d |
| 13 |  | Pruebas de Lectura de Configuración desde Código Matlab | 1.25d? | 2011-11-08 | 2011-11-14 |  | 5d |
| 14 |  | Definición de Interface Contra Set de Control ABB | 1.83d? | 2011-11-22 | 2011-11-25 | 10, 11, 12, 13 | 2d |
| 15 |  | Definición de Interface Contra Sensor Siemens | 1d? | 2011-11-23 | 2011-11-29 | 10, 11, 12, 13 | 0d |
| 16 | 4 | **Implementación de Interfaces Set de Cotrol ABB y Sensor Siemens** | 21.25d? | 2011-11-30 | 2011-12-29 | 9 | 15.75d |
| 17 |  | Desarrollo Interface Contra Set de Control ABB | 10.62d? | 2011-11-30 | 2011-12-14 |  | 26.38d |
| 18 |  | Desarrollo Interface Contra Sensor Siemens | 10.62d? | 2011-12-14 | 2011-12-29 |  | 15.75d |
| 19 | 5 | **Desarrollo de Software (excluyendo comunicación con Set de Control ABB y Sensor Siemens)** | 37d? | 2011-11-29 | 2012-01-19 | 9 | 0d |
| 20 |  | CU 1 Instalar la Estación de Control | 1.5d? | 2012-01-02 | 2012-01-06 |  | 8d |
| 21 |  | CU 2 Configurar Parámetros Avanzados | 1.25d? | 2012-01-06 | 2012-01-12 |  | 5d |
| 22 |  | CU 3 Conectarse al Set de Control Elegido | 2.5d? | 2011-11-29 | 2011-12-09 |  | 27d |
| 23 |  | CU 4 Desconectarse del Set de Control | 0.75d? | 2011-12-09 | 2011-12-13 | 22 | 27d |
| 24 |  | CU 5 Ampliar la Gráfica del Proceso | 2.5d? | 2011-12-13 | 2011-12-23 |  | 19d |
| 25 |  | CU 6 Modificar Párametro de Control | 2.5d? | 2011-12-22 | 2012-01-03 |  | 12d |
| 26 |  | CU 7 Guardar Configuración de Control Automático | 1d? | 2012-01-05 | 2012-01-10 |  | 7d |
| 27 |  | CU 8 Iniciar Grabación del Proceso | 3.25d? | 2011-11-29 | 2011-12-13 |  | 0d |
| 28 |  | CU 9 Finalizar Grabación del Proceso | 2.25d? | 2011-12-13 | 2011-12-22 | 27 | 20d |
| 29 |  | CU 10 Agregar Comentario Durante la Grabación del Proceso | 1.5d? | 2012-01-12 | 2012-01-19 | 27 | 0d |
| 30 |  | CU 11 Cargar Proceso Grabado | 1.75d? | 2011-12-23 | 2012-01-02 |  | 13d |
| 31 | 6 | **Integración Implementaciones Set de Control ABB y Sensor Siemens** | 18d? | 2012-01-19 | 2012-02-14 | 16, 19 | 0d |
| 32 |  | Integración CU 1 Instalar la Estación de Control | 1d? | 2012-01-19 | 2012-01-23 |  | 0d |
| 33 |  | Integración CU 2 Configurar Parámetros Avanzados | 1d? | 2012-01-23 | 2012-01-24 | 32 | 0d |
| 34 |  | Integración CU 3 Conectarse al Set de Control Elegido | 1d? | 2012-01-24 | 2012-01-26 | 33 | 0d |
| 35 |  | Integración CU 4 Desconectarse del Set de Control | 1d? | 2012-01-26 | 2012-01-30 | 34 | 0d |
| 36 |  | Integración CU 5 Ampliar la Gráfica del Proceso | 1d? | 2012-01-30 | 2012-01-31 | 35 | 0d |
| 37 |  | Integración CU 6 Modificar Párametro de Control | 1d? | 2012-01-31 | 2012-02-02 | 36 | 0d |
| 38 |  | Integración CU 7 Guardar Configuración de Control Automático | 1d? | 2012-02-02 | 2012-02-03 | 37 | 0d |
| 39 |  | Integración CU 8 Iniciar Grabación del Proceso | 1d? | 2012-02-03 | 2012-02-07 | 38 | 0d |
| 40 |  | Integración CU 9 Finalizar Grabación del Proceso | 1d? | 2012-02-07 | 2012-02-09 | 39 | 0d |
| 41 |  | Integración CU 10 Agregar Comentario Durante la Grabación del Proceso | 1d? | 2012-02-09 | 2012-02-10 | 40 | 0d |
| 42 |  | Integración CU 11 Cargar Proceso Grabado | 1d? | 2012-02-10 | 2012-02-14 | 41 | 0d |
| 43 | 7 | **Prueba del Software Sistema (excepto Set de Control ABB y Sensor Siemens)** | 12d? | 2012-02-14 | 2012-03-01 | 31 | 0d |
| 44 |  | Pruebas de Casos de Test | 2.5d? | 2012-02-14 | 2012-02-24 |  | 0d |
| 45 |  | Pruebas de Aceptación Internas | 1.25d? | 2012-02-24 | 2012-03-01 | 44 | 0d |
| 46 | 8 | **Prueba del Software Sistema Completo** | 9d? | 2012-03-01 | 2012-03-14 | 19, 31 | 0d |
| 47 |  | Pruebas de Casos de Test | 4.17d? | 2012-03-01 | 2012-03-09 | 45 | 0d |
| 48 |  | Pruebas de Aceptación Internas sobre Producto Completo | 1.67d? | 2012-03-12 | 2012-03-14 | 47 | 0d |
| 49 | 9 | **Presentación y Entrega Final del Producto** | 4d? | 2012-03-14 | 2012-03-20 | 46, 43 | 0d |
| 50 |  | Redacción de manuales | 0.62d? | 2012-03-14 | 2012-03-16 |  | 0d |
| 51 |  | Presentación | 0.62d? | 2012-03-16 | 2012-03-20 | 50 | 0d |

## Version 2 (saved 2011-09-15)

Note of the change: Se retorna a 2hs diarias para cada recurso en planific

Last finish 2012-03-20 → 2012-05-07 (+48d).

Changed:

| ID | Task | Start | Finish | Duration | Total float |
| --- | --- | --- | --- | --- | --- |
| 2 | **Documentación** | 2011-09-19 → 2011-09-20 (+1d) | 2011-10-27 → 2011-11-07 (+11d) | 28d? → 34d? | 6d → 10d |
| 3 | Análisis | 2011-09-19 → 2011-09-20 (+1d) | 2011-09-27 → 2011-09-29 (+2d) |  | 5d → 10d |
| 4 | Revisión análisis | 2011-10-21 → 2011-11-01 (+11d) | 2011-10-25 → 2011-11-03 (+9d) |  | 9d → 12d |
| 5 | Diseño | 2011-09-27 → 2011-09-29 (+2d) | 2011-10-07 → 2011-10-13 (+6d) |  | 5d → 10d |
| 6 | Revisión Diseño | 2011-10-25 → 2011-11-03 (+9d) | 2011-10-27 → 2011-11-07 (+11d) |  | 7d → 10d |
| 7 | Diseño Detallado | 2011-10-07 → 2011-10-13 (+6d) | 2011-10-19 → 2011-10-27 (+8d) |  | 11d → 15d |
| 8 | Revisión Diseño Detallado | 2011-10-19 → 2011-10-27 (+8d) | 2011-10-21 → 2011-10-31 (+10d) |  | 11d → 15d |
| 9 | **Configuración de Infraestructura (hardware)** | 2011-10-27 → 2011-11-08 (+12d) | 2011-11-29 → 2011-12-16 (+17d) | 23d? → 28d? |  |
| 10 | Conexionado Inicial y Pruebas Preliminares | 2011-11-10 → 2011-11-25 (+15d) | 2011-11-22 → 2011-12-08 (+16d) |  |  |
| 11 | Pruebas de Adquisición de Datos desde Placa RIAC | 2011-10-27 → 2011-11-08 (+12d) | 2011-11-08 → 2011-11-21 (+13d) |  | 9d → 13d |
| 12 | Pruebas de Control del Actuador desde Matlab | 2011-10-27 → 2011-11-08 (+12d) | 2011-11-10 → 2011-11-24 (+14d) |  | 7d → 10d |
| 13 | Pruebas de Lectura de Configuración desde Código Matlab | 2011-11-08 → 2011-11-22 (+14d) | 2011-11-14 → 2011-11-28 (+14d) |  | 5d → 8d |
| 14 | Definición de Interface Contra Set de Control ABB | 2011-11-22 → 2011-12-09 (+17d) | 2011-11-25 → 2011-12-14 (+19d) |  |  |
| 15 | Definición de Interface Contra Sensor Siemens | 2011-11-23 → 2011-12-09 (+16d) | 2011-11-29 → 2011-12-16 (+17d) |  |  |
| 16 | **Implementación de Interfaces Set de Cotrol ABB y Sensor Siemens** | 2011-11-30 → 2011-12-19 (+19d) | 2011-12-29 → 2012-01-17 (+19d) |  | 15.75d → 25.75d |
| 17 | Desarrollo Interface Contra Set de Control ABB | 2011-11-30 → 2011-12-19 (+19d) | 2011-12-14 → 2012-01-02 (+19d) |  | 26.38d → 36.38d |
| 18 | Desarrollo Interface Contra Sensor Siemens | 2011-12-14 → 2012-01-02 (+19d) | 2011-12-29 → 2012-01-17 (+19d) |  | 15.75d → 25.75d |
| 19 | **Desarrollo de Software (excluyendo comunicación con Set de Control ABB y Sensor Siemens)** | 2011-11-29 → 2011-12-16 (+17d) | 2012-01-19 → 2012-02-21 (+33d) | 37d? → 47d? |  |
| 20 | CU 1 Instalar la Estación de Control | 2012-01-02 → 2012-01-27 (+25d) | 2012-01-06 → 2012-02-06 (+31d) |  | 8d → 11d |
| 21 | CU 2 Configurar Parámetros Avanzados | 2012-01-06 → 2012-02-06 (+31d) | 2012-01-12 → 2012-02-13 (+32d) |  | 5d → 6d |
| 22 | CU 3 Conectarse al Set de Control Elegido | 2011-11-29 → 2011-12-16 (+17d) | 2011-12-09 → 2011-12-30 (+21d) |  | 27d → 34d |
| 23 | CU 4 Desconectarse del Set de Control | 2011-12-09 → 2011-12-30 (+21d) | 2011-12-13 → 2012-01-04 (+22d) |  | 27d → 34d |
| 24 | CU 5 Ampliar la Gráfica del Proceso | 2011-12-13 → 2012-01-04 (+22d) | 2011-12-23 → 2012-01-18 (+26d) |  | 19d → 24d |
| 25 | CU 6 Modificar Párametro de Control | 2011-12-22 → 2012-01-17 (+26d) | 2012-01-03 → 2012-01-31 (+28d) |  | 12d → 15d |
| 26 | CU 7 Guardar Configuración de Control Automático | 2012-01-05 → 2012-02-02 (+28d) | 2012-01-10 → 2012-02-08 (+29d) |  | 7d → 9d |
| 27 | CU 8 Iniciar Grabación del Proceso | 2011-11-29 → 2011-12-16 (+17d) | 2011-12-13 → 2012-01-04 (+22d) |  |  |
| 28 | CU 9 Finalizar Grabación del Proceso | 2011-12-13 → 2012-01-04 (+22d) | 2011-12-22 → 2012-01-17 (+26d) |  | 20d → 25d |
| 29 | CU 10 Agregar Comentario Durante la Grabación del Proceso | 2012-01-12 → 2012-02-13 (+32d) | 2012-01-19 → 2012-02-21 (+33d) |  |  |
| 30 | CU 11 Cargar Proceso Grabado | 2011-12-23 → 2012-01-18 (+26d) | 2012-01-02 → 2012-01-27 (+25d) |  | 13d → 17d |
| 31 | **Integración Implementaciones Set de Control ABB y Sensor Siemens** | 2012-01-19 → 2012-02-21 (+33d) | 2012-02-14 → 2012-03-22 (+37d) | 18d? → 22d? |  |
| 32 | Integración CU 1 Instalar la Estación de Control | 2012-01-19 → 2012-02-21 (+33d) | 2012-01-23 → 2012-02-23 (+31d) |  |  |
| 33 | Integración CU 2 Configurar Parámetros Avanzados | 2012-01-23 → 2012-02-23 (+31d) | 2012-01-24 → 2012-02-27 (+34d) |  |  |
| 34 | Integración CU 3 Conectarse al Set de Control Elegido | 2012-01-24 → 2012-02-27 (+34d) | 2012-01-26 → 2012-02-29 (+34d) |  |  |
| 35 | Integración CU 4 Desconectarse del Set de Control | 2012-01-26 → 2012-02-29 (+34d) | 2012-01-30 → 2012-03-02 (+32d) |  |  |
| 36 | Integración CU 5 Ampliar la Gráfica del Proceso | 2012-01-30 → 2012-03-02 (+32d) | 2012-01-31 → 2012-03-06 (+35d) |  |  |
| 37 | Integración CU 6 Modificar Párametro de Control | 2012-01-31 → 2012-03-06 (+35d) | 2012-02-02 → 2012-03-08 (+35d) |  |  |
| 38 | Integración CU 7 Guardar Configuración de Control Automático | 2012-02-02 → 2012-03-08 (+35d) | 2012-02-03 → 2012-03-12 (+38d) |  |  |
| 39 | Integración CU 8 Iniciar Grabación del Proceso | 2012-02-03 → 2012-03-12 (+38d) | 2012-02-07 → 2012-03-14 (+36d) |  |  |
| 40 | Integración CU 9 Finalizar Grabación del Proceso | 2012-02-07 → 2012-03-14 (+36d) | 2012-02-09 → 2012-03-16 (+36d) |  |  |
| 41 | Integración CU 10 Agregar Comentario Durante la Grabación del Proceso | 2012-02-09 → 2012-03-16 (+36d) | 2012-02-10 → 2012-03-20 (+39d) |  |  |
| 42 | Integración CU 11 Cargar Proceso Grabado | 2012-02-10 → 2012-03-20 (+39d) | 2012-02-14 → 2012-03-22 (+37d) |  |  |
| 43 | **Prueba del Software Sistema (excepto Set de Control ABB y Sensor Siemens)** | 2012-02-14 → 2012-03-22 (+37d) | 2012-03-01 → 2012-04-12 (+42d) | 12d? → 15d? |  |
| 44 | Pruebas de Casos de Test | 2012-02-14 → 2012-03-22 (+37d) | 2012-02-24 → 2012-04-05 (+41d) |  |  |
| 45 | Pruebas de Aceptación Internas | 2012-02-24 → 2012-04-05 (+41d) | 2012-03-01 → 2012-04-12 (+42d) |  |  |
| 46 | **Prueba del Software Sistema Completo** | 2012-03-01 → 2012-04-12 (+42d) | 2012-03-14 → 2012-04-30 (+47d) | 9d? → 12d? |  |
| 47 | Pruebas de Casos de Test | 2012-03-01 → 2012-04-12 (+42d) | 2012-03-09 → 2012-04-24 (+46d) |  |  |
| 48 | Pruebas de Aceptación Internas sobre Producto Completo | 2012-03-12 → 2012-04-25 (+44d) | 2012-03-14 → 2012-04-30 (+47d) |  |  |
| 49 | **Presentación y Entrega Final del Producto** | 2012-03-14 → 2012-04-30 (+47d) | 2012-03-20 → 2012-05-07 (+48d) | 4d? → 5d? |  |
| 50 | Redacción de manuales | 2012-03-14 → 2012-04-30 (+47d) | 2012-03-16 → 2012-05-02 (+47d) |  |  |
| 51 | Presentación | 2012-03-16 → 2012-05-02 (+47d) | 2012-03-20 → 2012-05-07 (+48d) |  |  |

## Version 3 (saved 2011-09-19)

Note of the change: Se agregan horas al plan con recursos externos. La integración posee más horas para tareas complejas, las pruebas de aceptación con la funcionalidad completa son más complejas y de más horas.

Last finish 2012-05-07 → 2012-06-04 (+28d).

Changed:

| ID | Task | Start | Finish | Duration | Total float | Other |
| --- | --- | --- | --- | --- | --- | --- |
| 2 | **Documentación** |  | 2011-11-07 → 2011-11-17 (+10d) | 34d? → 42d? |  |  |
| 4 | Revisión análisis | 2011-11-01 → 2011-11-03 (+2d) | 2011-11-03 → 2011-11-10 (+7d) | 0.62d? → 5d | 12d → 15d |  |
| 6 | Revisión Diseño | 2011-11-03 → 2011-11-10 (+7d) | 2011-11-07 → 2011-11-17 (+10d) | 0.62d? → 5d |  |  |
| 8 | Revisión Diseño Detallado |  | 2011-10-31 → 2011-11-03 (+3d) | 0.62d? → 5d | 15d → 20d |  |
| 9 | **Configuración de Infraestructura (hardware)** | 2011-11-08 → 2011-11-17 (+9d) | 2011-12-16 → 2011-12-29 (+13d) | 28d? → 30d? |  |  |
| 10 | Conexionado Inicial y Pruebas Preliminares | 2011-11-25 → 2011-11-17 (-8d) | 2011-12-08 → 2011-11-30 (-8d) |  | 0d → 13d |  |
| 11 | Pruebas de Adquisición de Datos desde Placa RIAC | 2011-11-08 → 2011-11-17 (+9d) | 2011-11-21 → 2011-11-30 (+9d) |  |  |  |
| 12 | Pruebas de Control del Actuador desde Matlab | 2011-11-08 → 2011-12-01 (+23d) | 2011-11-24 → 2011-12-19 (+25d) |  | 10d → 0d |  |
| 13 | Pruebas de Lectura de Configuración desde Código Matlab | 2011-11-22 → 2011-12-01 (+9d) | 2011-11-28 → 2011-12-07 (+9d) |  |  |  |
| 14 | Definición de Interface Contra Set de Control ABB | 2011-12-09 → 2011-12-20 (+11d) | 2011-12-14 → 2011-12-29 (+15d) | 1.83d? → 3.67d? | 2d → 0d | resources Pablo D. Roca; Ezequiel Di Donato; Emmanuel Espina → Pablo D. Roca [50%]; Ezequiel Di Donato [50%]; Emmanuel Espina [50%] |
| 15 | Definición de Interface Contra Sensor Siemens | 2011-12-09 → 2011-12-20 (+11d) | 2011-12-16 → 2011-12-23 (+7d) | 1d? → 2d? | 0d → 4d | resources Pablo D. Roca; Ezequiel Di Donato; Emmanuel Espina → Pablo D. Roca [50%]; Ezequiel Di Donato [50%]; Emmanuel Espina [50%] |
| 16 | **Implementación de Interfaces Set de Cotrol ABB y Sensor Siemens** | 2011-12-19 → 2011-12-30 (+11d) | 2012-01-17 → 2012-01-30 (+13d) |  |  |  |
| 17 | Desarrollo Interface Contra Set de Control ABB | 2011-12-19 → 2011-12-30 (+11d) | 2012-01-02 → 2012-01-13 (+11d) |  |  |  |
| 18 | Desarrollo Interface Contra Sensor Siemens | 2012-01-02 → 2012-01-13 (+11d) | 2012-01-17 → 2012-01-30 (+13d) |  |  |  |
| 19 | **Desarrollo de Software (excluyendo comunicación con Set de Control ABB y Sensor Siemens)** | 2011-12-16 → 2011-12-29 (+13d) | 2012-02-21 → 2012-03-05 (+13d) |  |  |  |
| 20 | CU 1 Instalar la Estación de Control | 2012-01-27 → 2012-02-09 (+13d) | 2012-02-06 → 2012-02-17 (+11d) |  |  |  |
| 21 | CU 2 Configurar Parámetros Avanzados | 2012-02-06 → 2012-02-17 (+11d) | 2012-02-13 → 2012-02-24 (+11d) |  |  |  |
| 22 | CU 3 Conectarse al Set de Control Elegido | 2011-12-16 → 2011-12-29 (+13d) | 2011-12-30 → 2012-01-12 (+13d) |  |  |  |
| 23 | CU 4 Desconectarse del Set de Control | 2011-12-30 → 2012-01-12 (+13d) | 2012-01-04 → 2012-01-17 (+13d) |  |  |  |
| 24 | CU 5 Ampliar la Gráfica del Proceso | 2012-01-04 → 2012-01-17 (+13d) | 2012-01-18 → 2012-01-31 (+13d) |  |  |  |
| 25 | CU 6 Modificar Párametro de Control | 2012-01-17 → 2012-01-30 (+13d) | 2012-01-31 → 2012-02-13 (+13d) |  |  |  |
| 26 | CU 7 Guardar Configuración de Control Automático | 2012-02-02 → 2012-02-15 (+13d) | 2012-02-08 → 2012-02-21 (+13d) |  |  |  |
| 27 | CU 8 Iniciar Grabación del Proceso | 2011-12-16 → 2011-12-29 (+13d) | 2012-01-04 → 2012-01-17 (+13d) |  |  |  |
| 28 | CU 9 Finalizar Grabación del Proceso | 2012-01-04 → 2012-01-17 (+13d) | 2012-01-17 → 2012-01-30 (+13d) |  |  |  |
| 29 | CU 10 Agregar Comentario Durante la Grabación del Proceso | 2012-02-13 → 2012-02-24 (+11d) | 2012-02-21 → 2012-03-05 (+13d) |  |  |  |
| 30 | CU 11 Cargar Proceso Grabado | 2012-01-18 → 2012-01-31 (+13d) | 2012-01-27 → 2012-02-09 (+13d) |  |  |  |
| 31 | **Integración Implementaciones Set de Control ABB y Sensor Siemens** | 2012-02-21 → 2012-03-05 (+13d) | 2012-03-22 → 2012-04-17 (+26d) | 22d? → 31d? |  |  |
| 32 | Integración CU 1 Instalar la Estación de Control | 2012-02-21 → 2012-03-05 (+13d) | 2012-02-23 → 2012-03-07 (+13d) | 1d? → 1.12d? |  |  |
| 33 | Integración CU 2 Configurar Parámetros Avanzados | 2012-02-23 → 2012-03-07 (+13d) | 2012-02-27 → 2012-03-09 (+11d) | 1d? → 1.12d? |  |  |
| 34 | Integración CU 3 Conectarse al Set de Control Elegido | 2012-02-27 → 2012-03-09 (+11d) | 2012-02-29 → 2012-03-16 (+16d) | 1d? → 2.25d? |  |  |
| 35 | Integración CU 4 Desconectarse del Set de Control | 2012-02-29 → 2012-03-16 (+16d) | 2012-03-02 → 2012-03-22 (+20d) | 1d? → 2.25d? |  |  |
| 36 | Integración CU 5 Ampliar la Gráfica del Proceso | 2012-03-02 → 2012-03-22 (+20d) | 2012-03-06 → 2012-03-27 (+21d) | 1d? → 1.12d? |  |  |
| 37 | Integración CU 6 Modificar Párametro de Control | 2012-03-06 → 2012-03-27 (+21d) | 2012-03-08 → 2012-04-02 (+25d) | 1d? → 2.25d? |  |  |
| 38 | Integración CU 7 Guardar Configuración de Control Automático | 2012-03-08 → 2012-04-02 (+25d) | 2012-03-12 → 2012-04-04 (+23d) | 1d? → 1.12d? |  |  |
| 39 | Integración CU 8 Iniciar Grabación del Proceso | 2012-03-12 → 2012-04-04 (+23d) | 2012-03-14 → 2012-04-09 (+26d) | 1d? → 1.12d? |  |  |
| 40 | Integración CU 9 Finalizar Grabación del Proceso | 2012-03-14 → 2012-04-09 (+26d) | 2012-03-16 → 2012-04-11 (+26d) | 1d? → 1.12d? |  |  |
| 41 | Integración CU 10 Agregar Comentario Durante la Grabación del Proceso | 2012-03-16 → 2012-04-11 (+26d) | 2012-03-20 → 2012-04-13 (+24d) | 1d? → 1.12d? |  |  |
| 42 | Integración CU 11 Cargar Proceso Grabado | 2012-03-20 → 2012-04-13 (+24d) | 2012-03-22 → 2012-04-17 (+26d) | 1d? → 1.12d? |  |  |
| 43 | **Prueba del Software Sistema (excepto Set de Control ABB y Sensor Siemens)** | 2012-03-22 → 2012-04-17 (+26d) | 2012-04-12 → 2012-05-08 (+26d) |  |  |  |
| 44 | Pruebas de Casos de Test | 2012-03-22 → 2012-04-17 (+26d) | 2012-04-05 → 2012-05-01 (+26d) |  |  |  |
| 45 | Pruebas de Aceptación Internas | 2012-04-05 → 2012-05-01 (+26d) | 2012-04-12 → 2012-05-08 (+26d) |  |  |  |
| 46 | **Prueba del Software Sistema Completo** | 2012-04-12 → 2012-05-08 (+26d) | 2012-04-30 → 2012-05-28 (+28d) | 12d? → 14d? |  |  |
| 47 | Pruebas de Casos de Test | 2012-04-12 → 2012-05-08 (+26d) | 2012-04-24 → 2012-05-21 (+27d) |  |  |  |
| 48 | Pruebas de Aceptación Internas sobre Producto Completo | 2012-04-25 → 2012-05-21 (+26d) | 2012-04-30 → 2012-05-28 (+28d) | 1.67d? → 2.92d? |  |  |
| 49 | **Presentación y Entrega Final del Producto** | 2012-04-30 → 2012-05-29 (+29d) | 2012-05-07 → 2012-06-04 (+28d) | 5d? → 4d? |  |  |
| 50 | Redacción de manuales | 2012-04-30 → 2012-05-29 (+29d) | 2012-05-02 → 2012-05-31 (+29d) |  |  |  |
| 51 | Presentación | 2012-05-02 → 2012-05-31 (+29d) | 2012-05-07 → 2012-06-04 (+28d) |  |  |  |
